# Web

Schedule from MS Project, 2021-04-05 to 2021-06-08, A marks actual dates.

## Calendars

- Standard: Mon-Fri 08:00-12:00, 13:00-17:00; Sat-Sun off. Exceptions (off unless hours are given): 2021-04-10 to 2021-04-11 08:00-12:00, 13:00-17:00, 2021-04-17 08:00-12:00, 13:00-17:00, 2021-04-24 08:00-12:00, 13:00-17:00, 2021-06-05 08:00-12:00, 13:00-17:00.

## Resources

| Resource |
| --- |
| Nguyễn Thái Dương |
| Nguyễn Thành Đạt |
| Lưu Trần Anh Khoa |
| Trần Thanh Trung |

## Schedule

| ID | WBS | Task | Type | Duration | Start | Finish | Predecessors | Complete | Remaining | Baseline start | Baseline finish | Baseline duration | Total slack | Constraint | Resources | Work | Actual work |
| --- | --- | --- | --- | --- | --- | --- | --- | --- | --- | --- | --- | --- | --- | --- | --- | --- | --- |
| 1 | 1 | **Website bán Sneaker** |  | 52d | 2021-04-05 A | 2021-06-08 |  | 99% | 0.61d | 2021-04-05 | 2021-06-05 | 48d | 0d |  |  | 764h | 758h |
| 2 | 1.1 | **Họp đánh giá sprint** |  | 25d | 2021-04-29 | 2021-06-02 |  |  |  | 2021-04-29 | 2021-06-02 | 25d |  |  |  | 6h |  |
| 3 | 1.1.1 | Họp đánh giá sprint lần 1 | manual | 1h | 2021-04-29 | 2021-04-29 |  |  |  | 2021-04-29 | 2021-04-29 | 1h |  |  | Nguyễn Thái Dương | 1h |  |
| 4 | 1.1.2 | Họp đánh giá sprint lần 2 | manual | 1h | 2021-05-07 | 2021-05-07 |  |  |  | 2021-05-07 | 2021-05-07 | 1h |  |  | Nguyễn Thái Dương | 1h |  |
| 5 | 1.1.3 | Họp đánh giá sprint lần 3 | manual | 1h | 2021-05-14 | 2021-05-14 |  |  |  | 2021-05-14 | 2021-05-14 | 1h |  |  | Nguyễn Thái Dương | 1h |  |
| 6 | 1.1.4 | Họp đánh giá sprint lần 4 | manual | 1h | 2021-05-21 | 2021-05-21 |  |  |  | 2021-05-21 | 2021-05-21 | 1h |  |  | Nguyễn Thái Dương | 1h |  |
| 7 | 1.1.5 | Họp đánh giá sprint lần 5 | manual | 1h | 2021-05-28 | 2021-05-28 |  |  |  | 2021-05-28 | 2021-05-28 | 1h |  |  | Nguyễn Thái Dương | 1h |  |
| 8 | 1.1.6 | Họp đánh giá sprint lần 6 | manual | 1h | 2021-06-02 | 2021-06-02 |  |  |  | 2021-06-02 | 2021-06-02 | 1h |  |  | Nguyễn Thái Dương | 1h |  |
| 9 | 1.2 | **Xác định dự án** |  | 16d | 2021-04-05 A | 2021-04-21 A |  | 100% |  | 2021-04-05 | 2021-04-21 | 16d |  |  |  | 198h | 198h |
| 10 | 1.2.1 | **Khảo sát hiện trạng** |  | 1d | 2021-04-05 A | 2021-04-05 A |  | 100% |  | 2021-04-05 | 2021-04-05 | 1d |  |  |  | 40h | 40h |
| 11 | 1.2.1.1 | Hiện trạng tổ chức |  | 1d | 2021-04-05 A | 2021-04-05 A |  | 100% |  | 2021-04-05 | 2021-04-05 | 1d |  | start no earlier than 2021-04-05 | Lưu Trần Anh Khoa; Nguyễn Thành Đạt | 16h | 16h |
| 12 | 1.2.1.2 | Hiện trạng nghiệp vụ |  | 1d | 2021-04-05 A | 2021-04-05 A | 11SS | 100% |  | 2021-04-05 | 2021-04-05 | 1d |  | start no earlier than 2021-04-05 | Trần Thanh Trung; Lưu Trần Anh Khoa | 16h | 16h |
| 13 | 1.2.1.3 | Hiện trạng tin học |  | 1d | 2021-04-05 A | 2021-04-05 A | 12SS | 100% |  | 2021-04-05 | 2021-04-05 | 1d |  | start no earlier than 2021-04-05 | Trần Thanh Trung | 8h | 8h |
| 14 | 1.2.2 | **Khảo sát yêu cầu khách hàng, chủ sở hữu** |  | 8d | 2021-04-06 A | 2021-04-13 A |  | 100% |  | 2021-04-06 | 2021-04-13 | 8d |  |  |  | 98h | 98h |
| 15 | 1.2.2.1 | Đối tượng khảo sát |  | 0.25d | 2021-04-06 A | 2021-04-06 A | 13 | 100% |  | 2021-04-06 | 2021-04-06 | 0.25d |  | finish no earlier than 2021-04-06 | Nguyễn Thái Dương | 2h | 2h |
| 16 | 1.2.2.2 | Nội dung khảo sát |  | 2d | 2021-04-07 A | 2021-04-08 A | 15 | 100% |  | 2021-04-07 | 2021-04-08 | 2d |  |  | Nguyễn Thành Đạt; Trần Thanh Trung | 32h | 32h |
| 17 | 1.2.2.3 | Tiến hành khảo sát khách hàng |  | 4d | 2021-04-08 A | 2021-04-11 A | 15, 16 | 100% |  | 2021-04-08 | 2021-04-11 | 4d |  | finish no earlier than 2021-04-11 | Nguyễn Thành Đạt; Nguyễn Thái Dương | 32h | 32h |
| 18 | 1.2.2.4 | Tiến hành phỏng vấn chủ sở hữu |  | 1d | 2021-04-08 A | 2021-04-08 A | 15, 16 | 100% |  | 2021-04-08 | 2021-04-08 | 1d |  |  | Nguyễn Thành Đạt | 8h | 8h |
| 19 | 1.2.2.5 | Kết quả khảo sát |  | 1d | 2021-04-12 A | 2021-04-12 A | 17, 18 | 100% |  | 2021-04-12 | 2021-04-12 | 1d |  |  | Nguyễn Thái Dương; Nguyễn Thành Đạt | 16h | 16h |
| 20 | 1.2.2.6 | Viết tài liệu nghiên cứu khả thi |  | 1d | 2021-04-13 A | 2021-04-13 A | 19 | 100% |  | 2021-04-13 | 2021-04-13 | 1d |  |  | Trần Thanh Trung | 8h | 8h |
| 21 | 1.2.3 | **Lên kế hoạch dự án** |  | 5d | 2021-04-14 A | 2021-04-19 A | 14 | 100% |  | 2021-04-14 | 2021-04-19 | 5d |  |  |  | 44h | 44h |
| 22 | 1.2.3.1 | Lập Product Backlog |  | 2d | 2021-04-14 A | 2021-04-15 A |  | 100% |  | 2021-04-14 | 2021-04-15 | 2d |  |  | Nguyễn Thành Đạt | 16h | 16h |
| 23 | 1.2.3.2 | Lên danh sách công việc |  | 1d | 2021-04-16 A | 2021-04-16 A | 22 | 100% |  | 2021-04-16 | 2021-04-16 | 1d |  |  | Nguyễn Thái Dương | 8h | 8h |
| 24 | 1.2.3.3 | Lên kế hoạch nhân sự |  | 1d | 2021-04-17 A | 2021-04-17 A | 23 | 100% |  | 2021-04-17 | 2021-04-17 | 0.5d |  |  | Nguyễn Thái Dương | 8h | 8h |
| 25 | 1.2.3.4 | Lên kế hoạch sprint |  | 0.5d | 2021-04-17 A | 2021-04-17 A | 22, 23 | 100% |  | 2021-04-17 | 2021-04-17 | 1d |  | finish no earlier than 2021-04-17 | Nguyễn Thái Dương | 4h | 4h |
| 26 | 1.2.3.5 | Lên kế hoạch kinh phí |  | 1d | 2021-04-19 A | 2021-04-19 A | 23 | 100% |  | 2021-04-19 | 2021-04-19 | 1d |  |  | Trần Thanh Trung | 8h | 8h |

| ID | WBS | Task | Duration | Start | Finish | Predecessors | Complete | Actual start | Actual finish | Baseline start | Baseline finish | Baseline duration | Constraint | Resources | Work | Actual work |
| --- | --- | --- | --- | --- | --- | --- | --- | --- | --- | --- | --- | --- | --- | --- | --- | --- |
| 27 | 1.2.4 | **Quản lý rủi ro** | 2d | 2021-04-20 A | 2021-04-21 A | 21 | 100% |  |  | 2021-04-20 | 2021-04-21 | 2d |  |  | 16h | 16h |
| 28 | 1.2.4.1 | Giả định rủi ro | 1d | 2021-04-20 A | 2021-04-20 A |  | 100% |  |  | 2021-04-20 | 2021-04-20 | 1d |  | Lưu Trần Anh Khoa | 8h | 8h |
| 29 | 1.2.4.2 | Giải quyết rủi ro | 1d | 2021-04-21 A | 2021-04-21 A | 28 | 100% |  |  | 2021-04-21 | 2021-04-21 | 1d |  | Lưu Trần Anh Khoa | 8h | 8h |
| 30 | 1.3 | **Mua tên miền** | 1d | 2021-04-22 A | 2021-04-22 A |  | 100% |  |  | 2021-04-22 | 2021-04-22 | 1d |  |  | 8h | 8h |
| 31 | 1.3.1 | Mua tên miên | 1d | 2021-04-22 A | 2021-04-22 A |  | 100% |  |  | 2021-04-22 | 2021-04-22 | 1d | start no earlier than 2021-04-22 | Trần Thanh Trung | 8h | 8h |
| 32 | 1.4 | **Phân tích** | 3d | 2021-04-22 A | 2021-04-24 A | 9 | 100% |  |  | 2021-04-22 | 2021-04-26 | 3d |  |  | 56h | 56h |
| 33 | 1.4.1 | Vẽ mô hình thực thể - mối quan hệ (E-R) | 1d | 2021-04-22 A | 2021-04-22 A |  | 100% |  |  | 2021-04-22 | 2021-04-22 | 1d |  | Nguyễn Thái Dương; Trần Thanh Trung | 16h | 16h |
| 34 | 1.4.2 | Vẽ biểu đồ phân rã chức năng (FDD) | 1d | 2021-04-23 A | 2021-04-23 A |  | 100% |  |  | 2021-04-23 | 2021-04-23 | 1d |  | Lưu Trần Anh Khoa; Nguyễn Thành Đạt | 16h | 16h |
| 35 | 1.4.3 | Vẽ sơ đồ luồng dữ liệu (DFD) | 1d | 2021-04-24 A | 2021-04-24 A |  | 100% |  |  | 2021-04-24 | 2021-04-26 | 1d | finish no earlier than 2021-04-26 | Lưu Trần Anh Khoa; Nguyễn Thái Dương; Nguyễn Thành Đạt | 24h | 24h |
| 36 | 1.5 | **Thực hiện dự án** | 22d | 2021-04-24 | 2021-05-24 A | 33 | 100% | 2021-04-26 |  | 2021-04-24 | 2021-05-21 | 20d |  |  | 336h | 336h |
| 37 | 1.5.1 | **Thiết kế dữ liệu** | 2d | 2021-04-24 | 2021-04-26 |  | 100% | 2021-04-26 | 2021-04-27 | 2021-04-24 | 2021-04-26 | 2d |  |  | 32h | 32h |
| 38 | 1.5.1.1 | Mô hình ERD | 1d | 2021-04-26 A | 2021-04-26 A |  | 100% |  |  | 2021-04-24 | 2021-04-24 | 0d | finish no earlier than 2021-04-24 | Trần Thanh Trung; Lưu Trần Anh Khoa | 16h | 16h |
| 39 | 1.5.1.2 | Relation Model | 1d | 2021-04-27 A | 2021-04-27 A | 38 | 100% |  |  | 2021-04-26 | 2021-04-26 | 1d |  | Lưu Trần Anh Khoa; Trần Thanh Trung | 16h | 16h |
| 40 | 1.5.2 | **Physical Design** | 5d | 2021-04-28 A | 2021-05-04 A | 37 | 100% |  |  | 2021-04-27 | 2021-05-04 | 6d |  |  | 112h | 112h |
| 41 | 1.5.2.1 | Bố cục trang chủ | 1d | 2021-04-28 A | 2021-04-28 A |  | 100% |  |  | 2021-04-27 | 2021-04-27 | 0d |  | Nguyễn Thái Dương; Lưu Trần Anh Khoa | 16h | 16h |
| 42 | 1.5.2.2 | Bố cục đăng nhập | 1d | 2021-04-29 A | 2021-04-29 A | 41 | 100% |  |  | 2021-04-28 | 2021-04-28 | 1d |  | Lưu Trần Anh Khoa; Nguyễn Thành Đạt | 16h | 16h |
| 43 | 1.5.2.3 | Bố cục hiển thị sản phẩm | 1d | 2021-04-29 A | 2021-04-29 A | 41 | 100% |  |  | 2021-04-28 | 2021-04-28 | 1d | finish no earlier than 2021-04-28 | Lưu Trần Anh Khoa; Nguyễn Thành Đạt | 16h | 16h |
| 44 | 1.5.2.4 | Bố cục hiển thị một sản phẩm trên trang chủ | 1d | 2021-05-03 A | 2021-05-03 A | 43 | 100% |  |  | 2021-05-03 | 2021-05-03 | 1d |  | Lưu Trần Anh Khoa; Nguyễn Thành Đạt | 16h | 16h |
| 45 | 1.5.2.5 | Bố cục trang hiển thị sản phẩm | 1d | 2021-05-03 A | 2021-05-03 A | 43 | 100% |  |  | 2021-05-03 | 2021-05-03 | 1d |  | Lưu Trần Anh Khoa; Nguyễn Thành Đạt | 16h | 16h |
| 46 | 1.5.2.6 | Bố cục trang thanh toán | 1d | 2021-05-04 A | 2021-05-04 A | 45 | 100% |  |  | 2021-05-04 | 2021-05-04 | 1d |  | Lưu Trần Anh Khoa; Trần Thanh Trung | 16h | 16h |
| 47 | 1.5.2.7 | Bố cục trang doanh thu tháng | 1d | 2021-05-04 A | 2021-05-04 A | 45 | 100% |  |  | 2021-05-04 | 2021-05-04 | 1d |  | Lưu Trần Anh Khoa; Trần Thanh Trung | 16h | 16h |
| 48 | 1.5.3 | **Sơ đồ xử lý** | 3d | 2021-05-05 A | 2021-05-07 A | 41 | 100% |  |  | 2021-05-05 | 2021-05-07 | 3d |  |  | 48h | 48h |
| 49 | 1.5.3.1 | Xem chi tiết sản phẩm | 1d | 2021-05-05 A | 2021-05-05 A |  | 100% |  |  | 2021-05-05 | 2021-05-05 | 1d |  | Nguyễn Thái Dương; Lưu Trần Anh Khoa | 8h | 8h |
| 50 | 1.5.3.2 | Thêm sản phẩm vào giỏ hàng | 1d | 2021-05-05 A | 2021-05-05 A |  | 100% |  |  | 2021-05-05 | 2021-05-05 | 1d |  | Lưu Trần Anh Khoa; Nguyễn Thái Dương | 16h | 16h |
| 51 | 1.5.3.3 | Thanh toán | 1d | 2021-05-06 A | 2021-05-06 A | 49, 50 | 100% |  |  | 2021-05-06 | 2021-05-06 | 1d |  | Trần Thanh Trung | 8h | 8h |
| 52 | 1.5.3.4 | Lập hóa đơn | 1d | 2021-05-06 A | 2021-05-06 A | 49, 50 | 100% |  |  | 2021-05-06 | 2021-05-06 | 1d |  | Trần Thanh Trung | 8h | 8h |
| 53 | 1.5.3.5 | Lập doanh thu tháng | 1d | 2021-05-07 A | 2021-05-07 A | 51, 52 | 100% |  |  | 2021-05-07 | 2021-05-07 | 1d |  | Trần Thanh Trung | 8h | 8h |

| ID | WBS | Task | Duration | Start | Finish | Predecessors | Complete | Baseline start | Baseline finish | Baseline duration | Constraint | Resources | Work | Actual work |
| --- | --- | --- | --- | --- | --- | --- | --- | --- | --- | --- | --- | --- | --- | --- |
| 54 | 1.5.4 | **Sơ đồ giao diện** | 4d | 2021-05-08 A | 2021-05-13 A | 48 | 100% | 2021-05-08 | 2021-05-13 | 4d |  |  | 72h | 72h |
| 55 | 1.5.4.1 | Màn hình trang chủ | 1d | 2021-05-08 A | 2021-05-10 A |  | 100% | 2021-05-08 | 2021-05-10 | 1d |  | Lưu Trần Anh Khoa; Nguyễn Thái Dương | 16h | 16h |
| 56 | 1.5.4.2 | Màn hình đăng ký/đăng nhập | 1d | 2021-05-10 A | 2021-05-10 A |  | 100% | 2021-05-10 | 2021-05-10 | 1d |  | Lưu Trần Anh Khoa; Nguyễn Thành Đạt | 16h | 16h |
| 57 | 1.5.4.3 | Màn hình sản phẩm | 1d | 2021-05-11 A | 2021-05-11 A | 55, 56 | 100% | 2021-05-11 | 2021-05-11 | 1d |  | Lưu Trần Anh Khoa; Nguyễn Thành Đạt | 16h | 16h |
| 58 | 1.5.4.4 | Màn hình thanh toán | 1d | 2021-05-12 A | 2021-05-12 A | 57 | 100% | 2021-05-12 | 2021-05-12 | 1d |  | Lưu Trần Anh Khoa; Nguyễn Thành Đạt | 16h | 16h |
| 59 | 1.5.4.5 | Màn hình doanh thu tháng | 1d | 2021-05-13 A | 2021-05-13 A |  | 100% | 2021-05-13 | 2021-05-13 | 1d |  | Lưu Trần Anh Khoa | 8h | 8h |
| 60 | 1.5.5 | **Thiết kế** | 7d | 2021-05-14 A | 2021-05-24 A | 54 | 100% | 2021-05-14 | 2021-05-21 | 6d |  |  | 72h | 72h |
| 61 | 1.5.5.1 | Trang chủ | 3d | 2021-05-14 A | 2021-05-18 A |  | 100% | 2021-05-14 | 2021-05-17 | 2d |  | Lưu Trần Anh Khoa | 24h | 24h |
| 62 | 1.5.5.2 | Trang của sản phẩm | 2d | 2021-05-18 A | 2021-05-19 A | 61 | 100% | 2021-05-17 | 2021-05-18 | 2d |  | Lưu Trần Anh Khoa | 16h | 16h |
| 63 | 1.5.5.3 | Trang đăng ký / đăng nhập | 1d | 2021-05-20 A | 2021-05-20 A | 62 | 100% | 2021-05-19 | 2021-05-19 | 1d |  | Nguyễn Thành Đạt | 8h | 8h |
| 64 | 1.5.5.4 | Trang thanh toán | 1d | 2021-05-22 A | 2021-05-24 A | 63 | 100% | 2021-05-20 | 2021-05-20 | 1d |  | Nguyễn Thành Đạt; Trần Thanh Trung | 16h | 16h |
| 65 | 1.5.5.5 | Trang tổng kết doanh thu tháng | 1d | 2021-05-24 A | 2021-05-24 A | 64 | 100% | 2021-05-21 | 2021-05-21 | 1d |  | Trần Thanh Trung | 8h | 8h |
| 66 | 1.6 | **Kiểm thử** | 5d | 2021-05-25 A | 2021-05-31 A | 60 | 100% | 2021-05-24 | 2021-05-26 | 3d |  |  | 40h | 40h |
| 67 | 1.6.1 | Testcase | 2d | 2021-05-25 A | 2021-05-26 A |  | 100% | 2021-05-24 | 2021-05-25 | 2d | finish no earlier than 2021-05-24 | Lưu Trần Anh Khoa | 16h | 16h |
| 68 | 1.6.2 | Test plan | 2d | 2021-05-27 A | 2021-05-28 A | 67 | 100% | 2021-05-25 | 2021-05-26 | 2d |  | Nguyễn Thái Dương | 16h | 16h |
| 69 | 1.6.3 | Báo cáo kiểm thử | 1d | 2021-05-29 A | 2021-05-31 A | 68 | 100% | 2021-05-26 | 2021-05-26 | 1d |  | Trần Thanh Trung | 8h | 8h |
| 70 | 1.7 | **UAT** | 2d | 2021-05-31 A | 2021-06-01 A | 66 | 100% | 2021-05-27 | 2021-05-28 | 2d |  |  | 16h | 16h |
| 71 | 1.7.1 | UAT plan | 1d | 2021-05-31 A | 2021-05-31 A |  | 100% | 2021-05-27 | 2021-05-27 | 1d |  | Nguyễn Thành Đạt | 8h | 8h |
| 72 | 1.7.2 | Báo cáo UAT | 1d | 2021-06-01 A | 2021-06-01 A | 71 | 100% | 2021-05-28 | 2021-05-28 | 1d |  | Nguyễn Thành Đạt | 8h | 8h |
| 73 | 1.8 | **Chuyển giao sản phẩm** | 6d | 2021-06-02 A | 2021-06-08 A | 70 | 100% | 2021-05-31 | 2021-06-05 | 5d |  |  | 104h | 104h |
| 74 | 1.8.1 | Source Code | 0.5d | 2021-06-02 A | 2021-06-02 A |  | 100% | 2021-05-31 | 2021-05-31 | 0.5d |  | Lưu Trần Anh Khoa; Nguyễn Thái Dương | 8h | 8h |
| 75 | 1.8.2 | Checklist kỹ thuật | 2d | 2021-06-02 A | 2021-06-03 A | 74 | 100% | 2021-06-01 | 2021-06-02 | 2d |  | Lưu Trần Anh Khoa; Trần Thanh Trung | 32h | 32h |
| 76 | 1.8.3 | Hỗ trợ kỹ thuật | 2d | 2021-06-04 A | 2021-06-05 A |  | 100% | 2021-06-03 | 2021-06-04 | 2d | finish no earlier than 2021-06-04 | Lưu Trần Anh Khoa; Nguyễn Thành Đạt; Trần Thanh Trung | 48h | 48h |
| 77 | 1.8.4 | Kết thúc dự án | 1d | 2021-06-08 A | 2021-06-08 A | 76 | 100% | 2021-06-05 | 2021-06-05 | 0d | finish no earlier than 2021-06-05 | Nguyễn Thái Dương; Nguyễn Thành Đạt | 16h | 16h |
